Schedule from MS Project, 2018-02-20 to 2018-07-01, costs in ريال, A marks actual dates.

## Calendars

- team: Mon-Fri 08:00-12:00, 13:00-17:00; Sat-Sun off. Exceptions (off unless hours are given): 2017-12-01 to 2019-01-23 13:00-18:00 (work, recurring), 2017-12-02 to 2019-10-13 20:00-20:30 (norm, recurring), 2017-12-02 to 2023-09-01 08:00-09:00 (weekend, recurring), 2017-12-07 to 2023-08-31 13:00-18:00 (thursdays, recurring), 2018-03-20 to 2018-04-01 13:00-17:00 (holiday).

## Resources

| Resource | Rate |
| --- | --- |
| پگاه | 147700 |
| معین | 147700 |
| درنا | 147700 |

## Schedule

| ID | WBS | Task | Type | Duration | Start | Finish | Predecessors | Complete | Remaining | Actual start | Actual finish | Baseline start | Baseline finish | Baseline duration | Total slack | Deadline | Resources | Work | Actual work | Cost | Actual cost | زمان شروع | زمان پایان |
| --- | --- | --- | --- | --- | --- | --- | --- | --- | --- | --- | --- | --- | --- | --- | --- | --- | --- | --- | --- | --- | --- | --- | --- |
| 1 | 1 | **پروژه** |  | 34.12d | 2018-02-20 A | 2018-07-01 |  | 42% | 19.73d |  |  | 2018-02-20 | 2018-02-26 | 1d | 0d |  |  | 469.55h | 187.39h | 73,425,123.82 | 30,876,357.69 | 96/12/1 | 97/4/10 |
| 2 | 1.1 | **فاز اوّل(تهیهٔ پروپوزال)** |  | 3d | 2018-02-20 A | 2018-03-02 A |  | 100% |  |  |  | 2018-02-20 | 2018-02-28 | 1.62d |  | 2018-03-05 |  | 40.5h | 40.5h | 7,231,185 | 7,231,185 | 96/12/1 | 96/12/11 |
| 3 | 1.1.1 | **نوشتن بخش‌ها** |  | 2.31d | 2018-02-20 A | 2018-03-01 A |  | 100% |  |  |  | 2018-02-20 | 2018-02-28 | 1.5d |  |  |  | 37.5h | 37.5h | 6,697,821 | 6,697,821 | 96/12/1 | 96/12/10 |
| 4 | 1.1.1.1 | اهداف و توجیه |  | 0.5h | 2018-02-28 A | 2018-02-28 A |  | 100% |  |  |  | 2018-02-20 | 2018-02-20 | 0.5h |  |  | معین | 0.5h | 0.5h | 92,313 | 92,313 | 96/12/9 | 96/12/9 |
| 5 | 1.1.1.2 | معرفی و مفاد قرارداد |  | 4h | 2018-02-27 A | 2018-02-28 A |  | 100% |  |  |  | 2018-02-27 | 2018-02-28 | 4h |  |  | پگاه | 4h | 4h | 738,504 | 738,504 | 96/12/8 | 96/12/9 |
| 6 | 1.1.1.3 | **معرفی سیستم و توضیح تکنولوژی** |  | 1.5d | 2018-02-20 A | 2018-02-24 A |  | 100% |  |  |  | 2018-02-20 | 2018-02-26 | 1d |  |  |  | 8h | 8h | 1,477,008 | 1,477,008 | 96/12/1 | 96/12/5 |
| 7 | 1.1.1.3.1 | تهیه گزینه راه حل‌های تکنولوژی |  | 4h | 2018-02-20 A | 2018-02-21 A |  | 100% |  |  |  | 2018-02-20 | 2018-02-21 | 4h |  |  | معین | 4h | 4h | 738,504 | 738,504 | 96/12/1 | 96/12/2 |
| 8 | 1.1.1.3.2 | امکان سنجی گزینه ها |  | 2h | 2018-02-21 A | 2018-02-22 A | 7 | 100% |  |  |  | 2018-02-21 | 2018-02-22 | 2h |  |  | معین | 2h | 2h | 369,252 | 369,252 | 96/12/2 | 96/12/3 |
| 9 | 1.1.1.3.3 | انتخاب گزینه راه حل نهایی |  | 2h | 2018-02-22 A | 2018-02-24 A | 8 | 100% |  |  |  | 2018-02-23 | 2018-02-26 | 2h |  |  | معین | 2h | 2h | 369,252 | 369,252 | 96/12/3 | 96/12/5 |
| 10 | 1.1.1.4 | **پوشش نیازمندی‌های کارکردی و غیرکارکردی** |  | 0.69d | 2018-02-27 A | 2018-03-01 A |  | 100% |  |  |  | 2018-02-20 | 2018-02-28 | 1.25d |  |  |  | 4h | 4h | 738,504 | 738,504 | 96/12/8 | 96/12/10 |
| 11 | 1.1.1.4.1 | نیازمندی‌های کارکردی |  | 2h | 2018-02-28 A | 2018-03-01 A | 5 | 100% |  |  |  | 2018-02-27 | 2018-02-28 | 2h |  |  | پگاه | 2h | 2h | 369,252 | 369,252 | 96/12/9 | 96/12/10 |
| 12 | 1.1.1.4.2 | نیازمندی‌های غیرکارکردی |  | 2h | 2018-02-27 A | 2018-02-28 A |  | 100% |  |  |  | 2018-02-20 | 2018-02-21 | 2h |  |  | معین | 2h | 2h | 369,252 | 369,252 | 96/12/8 | 96/12/9 |
| 13 | 1.1.1.5 | برآورد زمانی |  | 4h | 2018-02-20 A | 2018-02-21 A |  | 100% |  |  |  | 2018-02-20 | 2018-02-21 | 4h |  |  | درنا | 4h | 4h | 656,448 | 656,448 | 96/12/1 | 96/12/2 |
| 14 | 1.1.1.6 | برآوردمالی |  | 5h | 2018-02-21 A | 2018-02-26 A | 13 | 100% |  |  |  | 2018-02-21 | 2018-02-28 | 5h |  |  | درنا | 5h | 5h | 820,560 | 820,560 | 96/12/2 | 96/12/7 |
| 15 | 1.1.1.7 | مراحل اجرای پروژه |  | 2h | 2018-02-27 A | 2018-02-28 A | 14 | 100% |  |  |  | 2018-02-20 | 2018-02-21 | 2h |  |  | درنا | 2h | 2h | 328,224 | 328,224 | 96/12/8 | 96/12/9 |
| 16 | 1.1.1.8 | معرفی اعضای گروه |  | 1d | 2018-02-20 A | 2018-02-24 A |  | 100% |  |  |  | 2018-02-20 | 2018-02-26 | 1d |  |  | پگاه | 8h | 8h | 1,477,008 | 1,477,008 | 96/12/1 | 96/12/5 |
| 17 | 1.1.1.9 | بیان نمرات اضافی |  | 2h | 2018-02-28 A | 2018-02-28 A |  | 100% |  |  |  | 2018-02-20 | 2018-02-21 | 2h |  |  | معین | 2h | 2h | 369,252 | 369,252 | 96/12/9 | 96/12/9 |
| 18 | 1.1.2 | بازخوانی و تصحیح پروپوزال و آماده سازی نسخه نهایی |  | 1h | 2018-03-01 A | 2018-03-02 A | 3 | 100% |  |  |  | 2018-02-28 | 2018-02-28 | 1h |  |  | پگاه; درنا; معین | 3h | 3h | 533,364 | 533,364 | 96/12/10 | 96/12/11 |
| 19 | 1.1.3 | ارسال نسخه نهایی | milestone | 0h | 2018-03-02 A | 2018-03-02 A | 18 | 100% |  |  |  | 2018-02-28 | 2018-02-28 | 0h |  |  | پگاه |  |  |  |  | 96/12/11 | 96/12/11 |
| 20 | 1.2 | **فاز دوم(ساختار شکست کار)** |  | 3.66d | 2018-03-02 A | 2018-03-20 | 19 | 100% |  |  | 2018-03-14 | 2018-02-28 | 2018-03-21 | 2.91d |  | 2018-03-30 |  | 23.14h | 23.14h | 4,041,253 | 4,041,253 | 96/12/11 | 96/12/29 |
| 21 | 1.2.1 | **یادگیری** |  | 0.62d | 2018-03-02 A | 2018-03-07 A |  | 100% |  |  |  | 2018-02-28 | 2018-03-08 | 1.12d |  |  |  | 11.89h | 11.89h | 2,084,220 | 2,084,220 | 96/12/11 | 96/12/16 |
| 22 | 1.2.1.1 | یادگیری گیت |  | 3h | 2018-03-02 A | 2018-03-07 A |  | 100% |  |  |  | 2018-02-28 | 2018-03-05 | 3h |  |  | درنا | 3h | 3h | 443,100 | 443,100 | 96/12/11 | 96/12/16 |
| 23 | 1.2.1.2 | یادگیری کار با project libre |  | 5h | 2018-03-02 A | 2018-03-07 A |  | 100% |  |  |  | 2018-02-28 | 2018-03-08 | 9h |  |  | معین [88.9%]; پگاه [88.9%] | 8.89h | 8.89h | 1,641,120 | 1,641,120 | 96/12/11 | 96/12/16 |
| 24 | 1.2.2 | **اجرا** |  | 10.25h | 2018-03-12 | 2018-03-20 |  | 100% |  | 2018-03-08 | 2018-03-14 | 2018-03-12 | 2018-03-21 | 1.53d |  |  |  | 11.25h | 11.25h | 1,957,033 | 1,957,033 | 96/12/17 | 96/12/23 |
| 25 | 1.2.2.1 | ساخت ریپازیتوری گیت |  | 0.25h | 2018-03-13 A | 2018-03-13 A |  | 100% |  |  |  | 2018-03-13 | 2018-03-13 | 0.25h |  |  | درنا | 0.25h | 0.25h | 36,925 | 36,925 | 96/12/22 | 96/12/22 |

| ID | WBS | Task | Type | Duration | Start | Finish | Predecessors | Complete | Remaining | Baseline start | Baseline finish | Baseline duration | Total slack | Free slack | Constraint | Resources | Work | Actual work | Cost | Actual cost | زمان شروع | زمان پایان |
| --- | --- | --- | --- | --- | --- | --- | --- | --- | --- | --- | --- | --- | --- | --- | --- | --- | --- | --- | --- | --- | --- | --- |
| 26 | 1.2.2.2 | **ساخت wbs** |  | 1.62d | 2018-03-08 A | 2018-03-14 A |  | 100% |  | 2018-03-12 | 2018-03-15 | 0.75d |  |  |  |  | 11h | 11h | 1,920,108 | 1,920,108 | 96/12/17 | 96/12/23 |
| 27 | 1.2.2.2.1 | **مشخص کردن کارها و وظایف** |  | 1.5d | 2018-03-08 A | 2018-03-14 A |  | 100% |  | 2018-03-12 | 2018-03-14 | 0.62d |  |  |  |  | 8h | 8h | 1,477,008 | 1,477,008 | 96/12/17 | 96/12/23 |
| 28 | 1.2.2.2.1.1 | نوشتن کارها و وظایف |  | 7h | 2018-03-08 A | 2018-03-14 A | 23 | 100% |  | 2018-03-12 | 2018-03-14 | 4h |  |  | start no later than 2018-03-08 | پگاه | 7h | 7h | 1,292,382 | 1,292,382 | 96/12/17 | 96/12/23 |
| 29 | 1.2.2.2.1.2 | ریویو |  | 1h | 2018-03-14 A | 2018-03-14 A | 28, 31 | 100% |  | 2018-03-14 | 2018-03-14 | 1h |  |  |  | پگاه | 1h | 1h | 184,626 | 184,626 | 96/12/23 | 96/12/23 |
| 30 | 1.2.2.2.2 | تمیزکاری و زیبا کردن |  | 1h | 2018-03-14 A | 2018-03-14 A | 29 | 100% |  | 2018-03-14 | 2018-03-15 | 1h |  |  |  | پگاه | 1h | 1h | 147,700 | 147,700 | 96/12/23 | 96/12/23 |
| 31 | 1.2.2.2.3 | اضافه کردن تقویم شمسی |  | 2h | 2018-03-13 A | 2018-03-14 A |  | 100% |  | 2018-03-13 | 2018-03-14 | 2h |  |  |  | معین | 2h | 2h | 295,400 | 295,400 | 96/12/22 | 96/12/23 |
| 32 | 1.2.2.3 | فرستادن WBS | milestone | 0h | 2018-03-14 A | 2018-03-14 A | 26 | 100% |  | 2018-03-15 | 2018-03-15 | 0h |  |  |  |  |  |  |  |  | 96/12/23 | 96/12/23 |
| 33 | 1.3 | **فاز سوم و چهارم** |  | 12.97d | 2018-03-20 A | 2018-05-02 | 20 | 59% | 5.28d | 2018-02-20 | 2018-03-28 | 8.5d? | 0d |  |  |  | 122.41h | 81.75h | 20,058,179.82 | 13,400,519.69 | 96/12/29 | 97/2/12 |
| 34 | 1.3.1 | **یادگیری** |  | 2d | 2018-03-20 A | 2018-03-24 A |  | 100% |  | 2018-03-21 | 2018-03-25 | 2d |  |  |  |  | 24h | 24h | 3,692,504 | 3,692,504 | 96/12/29 | 97/1/4 |
| 35 | 1.3.1.1 | یادآوری درست نوشتن و کشیدن یوزکیس |  | 4h | 2018-03-20 A | 2018-03-21 A |  | 100% |  | 2018-03-21 | 2018-03-22 | 4h |  |  |  | معین | 4h | 4h | 738,504 | 738,504 | 96/12/29 | 97/1/1 |
| 36 | 1.3.1.2 | یادگرفتن کار با ابزار وایرفریم درست کردن |  | 16h | 2018-03-20 A | 2018-03-24 A |  | 100% |  | 2018-03-21 | 2018-03-25 | 16h |  |  |  | درنا | 16h | 16h | 2,363,200 | 2,363,200 | 96/12/29 | 97/1/4 |
| 37 | 1.3.1.3 | یاد گرفتن سلنیوم |  | 4h | 2018-03-20 A | 2018-03-21 A |  | 100% |  | 2018-03-21 | 2018-03-25 | 16h |  |  |  | پگاه | 4h | 4h | 590,800 | 590,800 | 96/12/29 | 97/1/1 |
| 38 | 1.3.2 | **اجرا** |  | 12.97d | 2018-03-20 A | 2018-05-02 |  | 50% | 6.5d | 2018-02-20 | 2018-02-28 | 1.25d? | 0d |  |  |  | 98.41h | 57.75h | 16,365,675.82 | 9,708,015.69 | 96/12/29 | 97/2/12 |
| 39 | 1.3.2.1 | دقیق‌تر کردن نیازمندی‌های پروپوزال |  | 2h | 2018-03-26 A | 2018-03-27 A |  | 100% |  | 2018-02-20 | 2018-02-21 | 2h |  |  |  | درنا | 2h | 2h | 328,224 | 328,224 | 97/1/6 | 97/1/7 |
| 40 | 1.3.2.2 | نوشتن یوزکیس‌ها |  | 17.4h | 2018-03-27 A | 2018-03-31 | 39, 35 | 85% | 2.61h | 2018-02-20 | 2018-03-03 | 15h | 6.76d | 2.91d |  | معین; پگاه | 28.5h | 25.89h | 5,261,841 | 4,780,080.81 | 97/1/7 | 97/1/11 |
| 41 | 1.3.2.3 | درست کردن داک نیازمندی‌ها و یوزکیس‌ها |  | 12h | 2018-04-22 A | 2018-04-27 | 40 | 85% | 1.8h | 2018-02-20 | 2018-02-21 | 4h | 0d |  | finish no earlier than 2018-04-27 | پگاه [18.2%] | 0.91h | 0.86h | 167,841.82 | 158,686.81 | 97/2/2 | 97/2/7 |
| 42 | 1.3.2.4 | نوشتن سناریوهای تست |  | 52.5h | 2018-04-03 A | 2018-05-02 | 40SS | 15% | 44.62h | 2018-02-20 | 2018-03-07 | 18h | 0d |  | finish no earlier than 2018-05-02 | درنا | 40h | 6.25h | 6,564,480 | 1,025,460.07 | 97/1/14 | 97/2/12 |
| 43 | 1.3.2.5 | **پیاده‌سازی وایرفریم** |  | 8.66d | 2018-03-20 A | 2018-04-11 |  | 86% | 1.21d | 2018-02-20 | 2018-03-28 | 8.5d | 2.75d |  |  |  | 27h | 22.75h | 4,043,289 | 3,415,564 | 96/12/29 | 97/1/22 |
| 44 | 1.3.2.5.1 | طراحی |  | 11.5h | 2018-03-20 A | 2018-03-26 |  | 90% | 1.15h | 2018-02-20 | 2018-03-07 | 18h | 5.21d | 0d |  | معین; درنا | 11.5h | 10.35h | 1,753,939 | 1,584,084 | 96/12/29 | 97/1/6 |
| 45 | 1.3.2.5.2 | پیاده‌سازی |  | 7.75h | 2018-03-26 A | 2018-04-11 | 44, 36 | 80% | 1.55h | 2018-02-27 | 2018-03-28 | 60h | 2.75d |  |  | پگاه; معین | 15.5h | 12.4h | 2,289,350 | 1,831,480 | 97/1/6 | 97/1/22 |
| 46 | 1.4 | **فاز پنجم(پیاده‌سازی و تست)** |  | 16.06d | 2018-04-25 A | 2018-07-01 | 33 | 16% | 13.48d |  |  |  | 0d |  |  |  | 283.5h | 42h | 42,094,506 | 6,203,400 | 97/2/5 | 97/4/10 |
| 47 | 1.4.1 | **یادگیری** |  | 3.06d | 2018-04-25 A | 2018-05-06 |  | 39% | 1.87d |  |  |  | 0d |  |  |  | 20.5h | 16h | 3,027,850 | 2,363,200 | 97/2/5 | 97/2/16 |
| 48 | 1.4.1.1 | یادگیری جنگو |  | 20h | 2018-04-25 A | 2018-05-06 |  | 40% | 12h |  |  |  | 0d |  |  | پگاه; معین | 20h | 16h | 2,954,000 | 2,363,200 | 97/2/5 | 97/2/16 |
| 49 | 1.4.1.2 | یادآوری postgres |  | 0.5h | 2018-05-02 | 2018-05-02 |  |  |  |  |  |  | 0d |  | start no earlier than 2018-04-24 | درنا | 0.5h |  | 73,850 |  | 97/2/12 | 97/2/12 |

| ID | WBS | Task | Duration | Start | Finish | Predecessors | Complete | Remaining | Total slack | Free slack | Resources | Work | Actual work | Cost | Actual cost | زمان شروع | زمان پایان |
| --- | --- | --- | --- | --- | --- | --- | --- | --- | --- | --- | --- | --- | --- | --- | --- | --- | --- |
| 50 | 1.4.2 | **اجرا** | 16.06d | 2018-04-25 A | 2018-07-01 |  | 15% | 13.68d | 0d |  |  | 247h | 26h | 36,703,456 | 3,840,200 | 97/2/5 | 97/4/10 |
| 51 | 1.4.2.1 | **اجرای سمت سرور** | 9.25d | 2018-05-07 | 2018-06-14 |  |  |  | 0d |  |  | 116h |  | 17,133,200 |  | 97/2/17 | 97/3/24 |
| 52 | 1.4.2.1.1 | **طراحی ER** | 1.12d | 2018-05-07 | 2018-05-10 |  |  |  | 0d |  |  | 9h |  | 1,329,300 |  | 97/2/17 | 97/2/20 |
| 53 | 1.4.2.1.1.1 | طراحی اوّلیه | 6h | 2018-05-07 | 2018-05-09 | 48 |  |  | 0d |  | معین | 6h |  | 886,200 |  | 97/2/17 | 97/2/19 |
| 54 | 1.4.2.1.1.2 | بازبینی | 3h | 2018-05-10 | 2018-05-10 | 53 |  |  | 0d |  | معین | 3h |  | 443,100 |  | 97/2/20 | 97/2/20 |
| 55 | 1.4.2.1.2 | **پیاده‌سازی پایگاه داده** | 0.88d | 2018-05-10 | 2018-05-16 |  |  |  | 0d |  |  | 7h |  | 1,033,900 |  | 97/2/20 | 97/2/26 |
| 56 | 1.4.2.1.2.1 | پیاده‌سازی اوّلیه | 5h | 2018-05-10 | 2018-05-15 | 54, 40 |  |  | 0d |  | درنا | 5h |  | 738,500 |  | 97/2/20 | 97/2/25 |
| 57 | 1.4.2.1.2.2 | نرمال‌سازی روابط | 2h | 2018-05-16 | 2018-05-16 | 56 |  |  | 0d |  | درنا | 2h |  | 295,400 |  | 97/2/26 | 97/2/26 |
| 58 | 1.4.2.1.3 | پیاده‌سازی کد پایتون | 58h | 2018-05-16 | 2018-06-14 | 48, 55 |  |  | 0d |  | پگاه; معین | 100h |  | 14,770,000 |  | 97/2/26 | 97/3/24 |
| 59 | 1.4.2.2 | **اجرای سمت کاربر** | 16.06d | 2018-04-25 A | 2018-07-01 |  | 27% | 11.67d | 0d |  |  | 125h | 26h | 18,462,500 | 3,840,200 | 97/2/5 | 97/4/10 |
| 60 | 1.4.2.2.1 | طراحی ui | 20h | 2018-05-03 A | 2018-05-30 | 48 | 50% | 10h | 1.25d | 0d | درنا | 20h | 10h | 2,954,000 | 1,477,000 | 97/2/13 | 97/3/9 |
| 61 | 1.4.2.2.2 | یادگیری بستر مناسب پیاده‌سازی ui | 20h | 2018-04-25 A | 2018-05-16 |  | 30% | 14h | 4.78d | 3.53d | پگاه | 20h | 6h | 2,954,000 | 886,200 | 97/2/5 | 97/2/26 |
| 62 | 1.4.2.2.3 | شروع پیاده‌سازی ui | 25h | 2018-05-30 A | 2018-06-13 | 60, 61 | 40% | 15h | 0.53d |  | درنا | 25h | 10h | 3,692,500 | 1,477,000 | 97/3/9 | 97/3/23 |
| 63 | 1.4.2.2.4 | پیاده‌سازی ui | 30h | 2018-06-14 | 2018-07-01 | 61SS+1d, 60, 58, 62 |  |  | 0d |  | پگاه; درنا | 60h |  | 8,862,000 |  | 97/3/24 | 97/4/10 |
| 64 | 1.4.2.3 | دیپلوی آزمایشی | 6h | 2018-06-14 | 2018-06-20 | 63SS |  |  | 0d |  | معین | 6h |  | 1,107,756 |  | 97/3/24 | 97/3/30 |
| 65 | 1.4.3 | **تست کار دیپلوی‌شده** | 2d | 2018-06-20 | 2018-06-27 | 64 |  |  | 0d |  |  | 16h |  | 2,363,200 |  | 97/3/30 | 97/4/6 |
| 66 | 1.4.3.1 | تست | 6h | 2018-06-20 | 2018-06-21 | 64 |  |  | 0d |  | معین | 6h |  | 886,200 |  | 97/3/30 | 97/3/31 |
| 67 | 1.4.3.2 | رفع اشکال | 10h | 2018-06-21 | 2018-06-27 | 66 |  |  | 0d |  | معین | 10h |  | 1,477,000 |  | 97/3/31 | 97/4/6 |
